# Verlaine-Rachecourt-Planning des Travaux

Schedule from MS Project, 2022-02-07 to 2022-05-27, 7 hours a day, A marks actual dates.

## Calendars

- Standard: Mon-Fri 09:00-12:00, 14:00-18:00; Sat-Sun off. Exceptions (off unless hours are given): 2022-02-26 to 2022-02-27 09:00-12:00, 14:00-18:00, 2022-03-26 to 2022-03-27 09:00-12:00, 14:00-18:00.

## Schedule

| ID | Task | Duration | Start | Finish | Predecessors | Complete | Total slack | Free slack | Constraint |
| --- | --- | --- | --- | --- | --- | --- | --- | --- | --- |
| 1 | Adaptations sanitaires | 3d | 2022-02-08 A | 2022-02-10 A |  | 100% |  |  | finish no earlier than 2022-02-10 |
| 2 | Mise sous pression sanitaires | 2d | 2022-02-09 A | 2022-02-10 A |  | 100% |  |  | finish no earlier than 2022-02-10 |
| 3 | Projection PU | 1d | 2022-02-11 A | 2022-02-11 A | 2 | 100% |  |  |  |
| 4 | Installation Chauffage sol | 2d | 2022-02-14 A | 2022-02-15 A | 3 | 100% |  |  |  |
| 5 | Montage du tableau électrique | 2d | 2022-02-22 A | 2022-02-23 A |  | 100% |  |  | finish no earlier than 2022-02-23 |
| 6 | Réception provisoire vinçotte | 1d | 2022-03-08 | 2022-03-08 | 5 |  | 63d |  | start no earlier than 2022-03-08 |
| 7 | Tranchée pour cablage compteur | 1d | 2022-03-18 | 2022-03-18 | 5 |  | 53d | 0d | start no earlier than 2022-03-18 |
| 8 | Déplacement compteur Electrique | 1d | 2022-03-22 | 2022-03-22 | 7FS+1d |  | 53d |  |  |
| 9 | Chapes | 4d | 2022-02-27 | 2022-03-02 | 4 |  | 12d | 0d | start no earlier than 2022-02-27 |
| 10 | Socles | 1d | 2022-03-03 | 2022-03-03 | 9 |  | 66d |  |  |
| 11 | Séchage naturel chappes | 7d | 2022-03-03 | 2022-03-11 | 9 |  | 14d | 0d | start no earlier than 2022-02-26 |
| 12 | Escaliers | 2d | 2022-03-14 | 2022-03-15 | 9FS+7d |  | 55d |  | start no earlier than 2022-03-01 |
| 13 | Installation chaudière, chaufferie et hydro | 5d | 2022-03-07 | 2022-03-11 | 9 |  | 60d | 0d | start no earlier than 2022-03-07 |
| 14 | Installation Solin | 1d | 2022-03-11 | 2022-03-11 | 13FF |  | 60d |  |  |
| 15 | Livraison Pellet | 1d | 2022-04-11 | 2022-04-11 | 16SS-1d |  | 34d |  |  |
| 16 | Mise en service Chaudière | 2d | 2022-04-12 | 2022-04-13 |  |  | 12d | 0d | start no earlier than 2022-04-12 |
| 17 | Bayard Inst. adoucisseur | 1d | 2022-03-21 | 2022-03-21 | 23SS |  | 51d |  |  |
| 18 | Séchage Forcé | 13d | 2022-04-14 | 2022-05-02 | 16 |  | 12d | 0d |  |
| 19 | Pause des tablettes de fenêtre | 2d | 2022-02-07 | 2022-02-08 |  |  | 85d |  |  |
| 20 | Faire livrer matériel plâtrier | 1d? | 2022-03-16 | 2022-03-16 | 23SS-3d |  | 57d |  |  |
| 21 | Placer le tetra pack | 1d | 2022-03-14 | 2022-03-14 | 23SS-6d |  | 59d |  | start no earlier than 2022-03-12 |
| 22 | Pause Garde-corp mezzanine | 1d | 2022-04-04 | 2022-04-04 | 23 |  | 39d |  |  |
| 23 | Plâtrier | 12d | 2022-03-21 | 2022-04-01 |  |  | 0d |  | start no earlier than 2022-03-21 |
| 24 | Séchage Plâtres | 30d | 2022-04-04 | 2022-05-13 | 23 |  | 0d |  |  |
| 25 | Enduits et peintures | 10d | 2022-05-16 | 2022-05-27 | 24 |  | 0d |  |  |
| 26 | Installation Escalier | 1d | 2022-04-04 | 2022-04-04 | 23 |  | 39d |  |  |
| 27 | Installation des prises | 1d | 2022-04-04 | 2022-04-04 | 23 |  | 39d |  |  |
| 28 | Toiture | 26d | 2022-04-11 | 2022-05-16 |  |  | 0d |  | start no earlier than 2022-04-11 |
| 29 | Echaffaudage Bardage | 1d? | 2022-05-17 | 2022-05-17 | 28 |  | 0d |  |  |
| 30 | Démontage Eternit | 1d | 2022-05-18 | 2022-05-18 | 29 |  | 0d |  |  |
| 31 | Isolation et remontage Eternit | 5d | 2022-05-19 | 2022-05-25 | 30 |  | 0d |  |  |
| 32 | Démontage Echaffaudage Bardage | 1d | 2022-05-27 | 2022-05-27 | 31FS+1d |  | 0d |  |  |
| 33 | Installation Panneaux | 1d | 2022-05-17 | 2022-05-17 | 28 |  | 8d |  |  |
| 34 | Carrelages murs SDB | 3d | 2022-05-16 | 2022-05-18 | 24 |  | 5d | 0d |  |
| 35 | Montage salle de bain | 1d | 2022-05-20 | 2022-05-20 | 34FS+1d |  | 5d |  |  |
| 36 | Pose du parquet | 5d | 2022-05-03 | 2022-05-09 | 18 |  | 12d | 0d | start no earlier than 2022-04-13 |
| 37 | Montage cuisine | 2d | 2022-05-10 | 2022-05-11 | 36 |  | 12d |  |  |
| 38 | Carrelages sur marches | 1d | 2022-04-20 | 2022-04-20 |  |  | 20d | 0d | start no earlier than 2022-04-20 |
| 39 | Portes intérieures | 1d | 2022-04-21 | 2022-04-21 | 38 |  | 20d | 0d |  |
| 40 | Mise en route VMC | 1d | 2022-04-22 | 2022-04-22 | 39 |  | 25d |  |  |
| 41 | Pose des plaintes | 1d | 2022-04-22 | 2022-04-22 | 39 |  | 20d | 0d |  |
| 42 | Nettoyage du chantier | 5d | 2022-04-25 | 2022-04-29 | 41 |  | 20d | 0d |  |
| 43 | Isolation toiture | 3d | 2022-04-25 | 2022-04-27 | 42SS |  | 22d |  |  |
